# AppDev_PRINCE2WithScrum

Schedule from MS Project, 2025-01-01 to 2025-09-01, costs in €.
Microsoft

## Calendars

- Standard: Mon-Fri 08:00-12:00, 13:00-17:00; Sat-Sun off.

## Resources

| Resource | Rate |
| --- | --- |
| Project Manager | 100 |
| Executive |  |
| Team Manager |  |
| Project Board |  |
| Web Team Dev 1 | 50 |
| Web Team Dev 2 | 50 |
| Web Team Senior 1 | 75 |
| Web Team Senior 2 | 75 |
| Backend Team Dev 1 | 50 |
| Backend Team Dev 2 | 50 |
| Backend Team Senior 1 | 75 |
| Backend Team Senior 2 | 75 |

## Schedule

| ID | WBS | Task | Type | Duration | Start | Finish | Predecessors | Total slack | Free slack | Resources | Work | Cost |
| --- | --- | --- | --- | --- | --- | --- | --- | --- | --- | --- | --- | --- |
| 1 | 1 | **Directing Level** |  | 173d | 2025-01-01 | 2025-08-29 |  |  |  |  | 36h |  |
| 2 | 1.1 | Project Mandate | milestone | 0d | 2025-01-01 | 2025-01-01 |  | 0d |  | Executive |  |  |
| 3 | 1.2 | Appoint the Executive and Project Manager |  | 2d | 2025-01-01 | 2025-01-03 | 2 | 0d |  | Executive | 16h |  |
| 4 | 1.3 | **Direct Project (DP)** |  | 151.37d | 2025-01-31 | 2025-09-01 |  | 0d |  |  | 20h |  |
| 5 | 1.3.1 | Authorize initiation |  | 0.5d | 2025-01-31 | 2025-01-31 | 32 | 0d |  | Project Board | 4h |  |
| 6 | 1.3.2 | Initiation notification | milestone | 0d | 2025-01-31 | 2025-01-31 | 5 | 0d |  | Project Board |  |  |
| 7 | 1.3.3 | Authorize Project (& Next Stage) (Alpha Stage) |  | 0.5d | 2025-02-27 | 2025-02-28 | 80 | 0d |  | Project Board | 4h |  |
| 8 | 1.3.4 | Project authorization & next stage notification | milestone | 0d | 2025-02-28 | 2025-02-28 | 7 | 0d |  | Project Board |  |  |
| 9 | 1.3.5 | Authorize Next Stage (or Exception Plan) (Beta Stage) |  | 0.5d | 2025-06-30 | 2025-06-30 | 126, 172 | 0.49d | 0d | Project Board | 4h |  |
| 10 | 1.3.6 | Beta Stage authorization (or exception plan) notification | milestone | 0d | 2025-06-30 | 2025-06-30 | 9 | 0.49d | 0d | Project Board |  |  |
| 11 | 1.3.7 | Authorize Next Stage (or Exception Plan) (GA Stage) |  | 0.5d | 2025-07-30 | 2025-07-30 | 172 | 1.49d | 0d | Project Board | 4h |  |
| 12 | 1.3.8 | GA Stage authorization (or exception plan) notification | milestone | 0d | 2025-07-30 | 2025-07-30 | 11 | 1.49d | 0d | Project Board |  |  |
| 13 | 1.3.9 | Authorize Project Closure |  | 0.5d | 2025-09-01 | 2025-09-01 | 217 | 0d |  | Project Board | 4h |  |
| 14 | 1.3.10 | Closure notification | milestone | 0d | 2025-09-01 | 2025-09-01 | 13 | 0d |  | Project Board |  |  |
| 15 | 2 | **Management Level** |  | 170.88d | 2025-01-03 | 2025-09-01 |  | 0d |  |  | 1193.22h | 112,112 |
| 16 | 2.1 | **Stages** |  | 170.88d | 2025-01-03 | 2025-09-01 |  | 0d |  |  | 1193.22h | 112,112 |
| 17 | 2.1.1 | **Pre-project Stage** |  | 20.01d | 2025-01-03 | 2025-01-31 |  | 0d |  |  | 80.08h | 8,008 |
| 18 | 2.1.1.1 | **Starting Up a Project (SU)** |  | 20d | 2025-01-03 | 2025-01-31 | 3 | 0d |  |  | 80h | 8,000 |
| 19 | 2.1.1.1.1 | **Activities** |  | 20d | 2025-01-03 | 2025-01-31 |  | 0d |  |  | 80h | 8,000 |
| 20 | 2.1.1.1.1.1 | Design and appoint the project management team |  | 20d | 2025-01-03 | 2025-01-31 |  | 0d |  | Project Manager [2.5%] | 4h | 400 |
| 21 | 2.1.1.1.1.2 | Prepare the outline Business Case |  | 20d | 2025-01-03 | 2025-01-31 |  | 0d |  | Project Manager [15%] | 24h | 2,400 |
| 22 | 2.1.1.1.1.3 | Select the project approach and assemble the Project Brief |  | 20d | 2025-01-03 | 2025-01-31 |  | 0d |  | Project Manager [15%] | 24h | 2,400 |
| 23 | 2.1.1.1.1.4 | Plan the initiation stage |  | 20d | 2025-01-03 | 2025-01-31 |  | 0d |  | Project Manager [15%] | 24h | 2,400 |
| 24 | 2.1.1.1.1.5 | Capture previous lessons |  | 20d | 2025-01-03 | 2025-01-31 |  | 0d |  | Project Manager [2.5%] | 4h | 400 |

| ID | WBS | Task | Type | Duration | Start | Finish | Predecessors | Total slack | Resources | Work | Cost |
| --- | --- | --- | --- | --- | --- | --- | --- | --- | --- | --- | --- |
| 25 | 2.1.1.1.2 | **Management Products** |  | 0d | 2025-01-31 | 2025-01-31 | 19 | 0d |  |  |  |
| 26 | 2.1.1.1.2.1 | Daily Log created | milestone | 0d | 2025-01-31 | 2025-01-31 |  | 0d | Project Manager |  |  |
| 27 | 2.1.1.1.2.2 | Lessons Log created | milestone | 0d | 2025-01-31 | 2025-01-31 |  | 0d | Project Manager |  |  |
| 28 | 2.1.1.1.2.3 | Outline Business Case created | milestone | 0d | 2025-01-31 | 2025-01-31 |  | 0d | Project Manager |  |  |
| 29 | 2.1.1.1.2.4 | Project Product Description created | milestone | 0d | 2025-01-31 | 2025-01-31 |  | 0d | Project Manager |  |  |
| 30 | 2.1.1.1.2.5 | Project Brief created | milestone | 0d | 2025-01-31 | 2025-01-31 |  | 0d | Project Manager |  |  |
| 31 | 2.1.1.1.2.6 | Initiation Stage Plan created | milestone | 0d | 2025-01-31 | 2025-01-31 |  | 0d | Project Manager |  |  |
| 32 | 2.1.1.2 | Request to initiate project |  | 0.01d | 2025-01-31 | 2025-01-31 | 18 | 0d | Project Manager | 0.08h | 8 |
| 33 | 2.1.2 | **Initiation Stage** |  | 19.11d | 2025-01-31 | 2025-02-27 | 6 | 0d |  | 152.9h | 8,080 |
| 34 | 2.1.2.1 | **Initiating a Project (IP)** |  | 16.1d | 2025-01-31 | 2025-02-24 |  | 0d |  | 128.8h | 5,680 |
| 35 | 2.1.2.1.1 | **Activities** |  | 16.1d | 2025-01-31 | 2025-02-24 |  | 0d |  | 128.8h | 5,680 |
| 36 | 2.1.2.1.1.1 | Create the Project Plan |  | 16d | 2025-01-31 | 2025-02-24 |  | 0d | Project Manager [37.5%] | 56h | 5,600 |
| 37 | 2.1.2.1.1.2 | Refine the Business Case |  | 16d | 2025-01-31 | 2025-02-24 |  | 0d |  | 16h |  |
| 38 | 2.1.2.1.1.3 | Prepare the Risk Management Strategy |  | 16d | 2025-01-31 | 2025-02-24 |  | 0d |  | 16h |  |
| 39 | 2.1.2.1.1.4 | Prepare the Configuration Management Strategy |  | 16d | 2025-01-31 | 2025-02-24 |  | 0d |  | 8h |  |
| 40 | 2.1.2.1.1.5 | Prepare the Quality Management Strategy |  | 16d | 2025-01-31 | 2025-02-24 |  | 0d |  | 16h |  |
| 41 | 2.1.2.1.1.6 | Prepare the Communication Management Strategy |  | 16d | 2025-01-31 | 2025-02-24 |  | 0d |  | 8h |  |
| 42 | 2.1.2.1.1.7 | Set up the project controls |  | 16d | 2025-01-31 | 2025-02-24 |  | 0d |  | 8h |  |
| 43 | 2.1.2.1.1.8 | Assemble the Project Initiation Documentation |  | 0.1d | 2025-02-24 | 2025-02-24 | 38, 40, 41, 42, 36, 37, 39 | 0d | Project Manager | 0.8h | 80 |
| 44 | 2.1.2.1.2 | **Management Products** |  | 0d | 2025-02-24 | 2025-02-24 | 35 | 3d |  |  |  |
| 45 | 2.1.2.1.2.1 | Risk Management Strategy created | milestone | 0d | 2025-02-24 | 2025-02-24 |  | 3d | Project Manager |  |  |
| 46 | 2.1.2.1.2.2 | Configuration Management Strategy created | milestone | 0d | 2025-02-24 | 2025-02-24 |  | 3d | Project Manager |  |  |
| 47 | 2.1.2.1.2.3 | Quality Management Strategy created | milestone | 0d | 2025-02-24 | 2025-02-24 |  | 3d | Project Manager |  |  |
| 48 | 2.1.2.1.2.4 | Communication Management Strategy created | milestone | 0d | 2025-02-24 | 2025-02-24 |  | 3d | Project Manager |  |  |
| 49 | 2.1.2.1.2.5 | Project Plan created | milestone | 0d | 2025-02-24 | 2025-02-24 |  | 3d | Project Manager |  |  |
| 50 | 2.1.2.1.2.6 | (Detailed) Business Case created | milestone | 0d | 2025-02-24 | 2025-02-24 |  | 3d | Project Manager |  |  |
| 51 | 2.1.2.1.2.7 | Risk Register created | milestone | 0d | 2025-02-24 | 2025-02-24 |  | 3d | Project Manager |  |  |
| 52 | 2.1.2.1.2.8 | Configuration Item Records created | milestone | 0d | 2025-02-24 | 2025-02-24 |  | 3d | Project Manager |  |  |
| 53 | 2.1.2.1.2.9 | Issue Register created | milestone | 0d | 2025-02-24 | 2025-02-24 |  | 3d | Project Manager |  |  |
| 54 | 2.1.2.1.2.10 | Quality Register created | milestone | 0d | 2025-02-24 | 2025-02-24 |  | 3d | Project Manager |  |  |
| 55 | 2.1.2.1.2.11 | Benefits Review Plan created | milestone | 0d | 2025-02-24 | 2025-02-24 |  | 3d | Project Manager |  |  |

Notes:
- 43: Priority lower

| ID | WBS | Task | Type | Duration | Start | Finish | Predecessors | Total slack | Resources | Work | Cost |
| --- | --- | --- | --- | --- | --- | --- | --- | --- | --- | --- | --- |
| 56 | 2.1.2.1.3 | **Theme: Plans - First Upcoming Stage planned** |  | 0d | 2025-02-24 | 2025-02-24 | 35 | 3d |  |  |  |
| 57 | 2.1.2.1.3.1 | Product Breakdown Structure Created | milestone | 0d | 2025-02-24 | 2025-02-24 |  | 3d | Project Manager; Team Manager |  |  |
| 58 | 2.1.2.1.3.2 | Product Descriptions created | milestone | 0d | 2025-02-24 | 2025-02-24 |  | 3d | Project Manager |  |  |
| 59 | 2.1.2.1.3.3 | Product Flow Diagram created | milestone | 0d | 2025-02-24 | 2025-02-24 |  | 3d | Project Manager; Team Manager |  |  |
| 60 | 2.1.2.2 | **Managing a Stage Boundary (SB)** |  | 3d | 2025-02-24 | 2025-02-27 |  | 0d |  | 24h | 2,400 |
| 61 | 2.1.2.2.1 | **Activities** |  | 3d | 2025-02-24 | 2025-02-27 |  | 0d |  | 24h | 2,400 |
| 62 | 2.1.2.2.1.1 | Plan the next stage |  | 2d | 2025-02-24 | 2025-02-26 | 35 | 0d | Project Manager | 16h | 1,600 |
| 63 | 2.1.2.2.1.2 | Update the Project Plan |  | 0.4d | 2025-02-26 | 2025-02-27 | 62 | 0.5d | Project Manager | 3.2h | 320 |
| 64 | 2.1.2.2.1.3 | Update the Business Case |  | 0.4d | 2025-02-27 | 2025-02-27 | 62 | 0.1d | Project Manager | 3.2h | 320 |
| 65 | 2.1.2.2.1.4 | Produce an Exception Plan |  | 0.1d | 2025-02-27 | 2025-02-27 | 62 | 0d | Project Manager | 0.8h | 80 |
| 66 | 2.1.2.2.1.5 | Report stage end |  | 0.1d | 2025-02-27 | 2025-02-27 | 62, 63, 64, 65 | 0d | Project Manager | 0.8h | 80 |
| 67 | 2.1.2.2.2 | **Management Products** |  | 0d | 2025-02-27 | 2025-02-27 | 61 | 0d |  |  |  |
| 68 | 2.1.2.2.2.1 | Project Initiation Documentation updated | milestone | 0d | 2025-02-27 | 2025-02-27 |  | 0d | Project Manager |  |  |
| 69 | 2.1.2.2.2.2 | Configuration Item Records updated | milestone | 0d | 2025-02-27 | 2025-02-27 |  | 0d | Project Manager |  |  |
| 70 | 2.1.2.2.2.3 | Risk Register updated | milestone | 0d | 2025-02-27 | 2025-02-27 |  | 0d | Project Manager |  |  |
| 71 | 2.1.2.2.2.4 | Issue Register updated | milestone | 0d | 2025-02-27 | 2025-02-27 |  | 0d | Project Manager |  |  |
| 72 | 2.1.2.2.2.5 | Quality Register updated | milestone | 0d | 2025-02-27 | 2025-02-27 |  | 0d | Project Manager |  |  |
| 73 | 2.1.2.2.2.6 | Project Plan updated | milestone | 0d | 2025-02-27 | 2025-02-27 |  | 0d | Project Manager |  |  |
| 74 | 2.1.2.2.2.7 | Business Case updated | milestone | 0d | 2025-02-27 | 2025-02-27 |  | 0d | Project Manager |  |  |
| 75 | 2.1.2.2.2.8 | Benefits Review Plan updated | milestone | 0d | 2025-02-27 | 2025-02-27 |  | 0d | Project Manager |  |  |
| 76 | 2.1.2.2.2.9 | Stage or Exception Plan created | milestone | 0d | 2025-02-27 | 2025-02-27 |  | 0d | Project Manager |  |  |
| 77 | 2.1.2.2.2.10 | Product Descriptions (next stage) created | milestone | 0d | 2025-02-27 | 2025-02-27 |  | 0d | Project Manager |  |  |
| 78 | 2.1.2.2.2.11 | End Stage Report created | milestone | 0d | 2025-02-27 | 2025-02-27 |  | 0d | Project Manager |  |  |
| 79 | 2.1.2.2.2.12 | Lessons Report created | milestone | 0d | 2025-02-27 | 2025-02-27 |  | 0d | Project Manager |  |  |
| 80 | 2.1.2.3 | Request to deliver a project |  | 0.01d | 2025-02-27 | 2025-02-27 | 60, 34 | 0d | Project Manager | 0.1h |  |

| ID | WBS | Task | Type | Duration | Start | Finish | Predecessors | Total slack | Free slack | Resources | Work | Cost |
| --- | --- | --- | --- | --- | --- | --- | --- | --- | --- | --- | --- | --- |
| 81 | 2.1.3 | **Stage 1 (Alpha)** |  | 85.76d | 2025-02-28 | 2025-06-30 | 8 | 0d |  |  | 640.08h | 64,008 |
| 82 | 2.1.3.1 | **Controlling a Stage (CS)** |  | 85.75d | 2025-02-28 | 2025-06-27 |  | 0d |  |  | 616h | 61,600 |
| 83 | 2.1.3.1.1 | **Activities** |  | 85.75d | 2025-02-28 | 2025-06-27 |  | 0d |  |  | 616h | 61,600 |
| 84 | 2.1.3.1.1.1 | Authorize a Work package |  | 0.5d | 2025-02-28 | 2025-02-28 |  | 0d |  | Project Manager | 4h | 400 |
| 85 | 2.1.3.1.1.2 | Capture and examine issues and risks |  | 80d | 2025-02-28 | 2025-06-20 | 84 | 5.74d |  | Project Manager [12.5%] | 80h | 8,000 |
| 86 | 2.1.3.1.1.3 | Escalate issues and risks |  | 80d | 2025-02-28 | 2025-06-20 | 84 | 5.74d |  | Project Manager [5%] | 32h | 3,200 |
| 87 | 2.1.3.1.1.4 | Take corrective action |  | 80d | 2025-02-28 | 2025-06-20 | 84 | 5.74d |  | Project Manager [12.5%] | 80h | 8,000 |
| 88 | 2.1.3.1.1.5 | Review Work Package status |  | 80d | 2025-02-28 | 2025-06-20 | 84 | 5.74d |  | Project Manager [37.5%] | 240h | 24,000 |
| 89 | 2.1.3.1.1.6 | Review the stage status |  | 80d | 2025-02-28 | 2025-06-20 | 84 | 5.74d |  | Project Manager [25%] | 160h | 16,000 |
| 90 | 2.1.3.1.1.7 | Report Highlights |  | 80d | 2025-02-28 | 2025-06-20 | 84 | 5.74d |  | Project Manager [2.5%] | 16h | 1,600 |
| 91 | 2.1.3.1.1.8 | Receive completed Work Packages |  | 0.5d | 2025-06-27 | 2025-06-27 | 253 | 0.49d |  | Project Manager | 4h | 400 |
| 92 | 2.1.3.1.2 | **Management Products** |  | 0d | 2025-06-27 | 2025-06-27 | 83 | 0.49d | 0d |  |  |  |
| 93 | 2.1.3.1.2.1 | Work Packages created | milestone | 0d | 2025-06-27 | 2025-06-27 |  | 0.49d |  | Project Manager |  |  |
| 94 | 2.1.3.1.2.2 | Highlight Report(s) created | milestone | 0d | 2025-06-27 | 2025-06-27 |  | 0.49d |  | Project Manager |  |  |
| 95 | 2.1.3.1.2.3 | Issue Report(s) created | milestone | 0d | 2025-06-27 | 2025-06-27 |  | 0.49d |  | Project Manager |  |  |
| 96 | 2.1.3.1.2.4 | Exception Report(s) created | milestone | 0d | 2025-06-27 | 2025-06-27 |  | 0.49d |  | Project Manager |  |  |
| 97 | 2.1.3.1.2.5 | Stage Plan updated | milestone | 0d | 2025-06-27 | 2025-06-27 |  | 0.49d |  | Project Manager |  |  |
| 98 | 2.1.3.1.2.6 | Configuration Item Records updated | milestone | 0d | 2025-06-27 | 2025-06-27 |  | 0.49d |  | Project Manager |  |  |
| 99 | 2.1.3.1.2.7 | Risk Register updated | milestone | 0d | 2025-06-27 | 2025-06-27 |  | 0.49d |  | Project Manager |  |  |
| 100 | 2.1.3.1.2.8 | Issue Register updated | milestone | 0d | 2025-06-27 | 2025-06-27 |  | 0.49d |  | Project Manager |  |  |
| 101 | 2.1.3.1.2.9 | Quality Register updated | milestone | 0d | 2025-06-27 | 2025-06-27 |  | 0.49d |  | Project Manager |  |  |
| 102 | 2.1.3.1.2.10 | Work Package(s) updated | milestone | 0d | 2025-06-27 | 2025-06-27 |  | 0.49d |  | Project Manager |  |  |
| 103 | 2.1.3.1.2.11 | Lessons log updated | milestone | 0d | 2025-06-27 | 2025-06-27 |  | 0.49d |  | Project Manager |  |  |
| 104 | 2.1.3.1.2.12 | Issue Report updated | milestone | 0d | 2025-06-27 | 2025-06-27 |  | 0.49d |  | Project Manager |  |  |
| 105 | 2.1.3.1.2.13 | Daily Log updated | milestone | 0d | 2025-06-27 | 2025-06-27 |  | 0.49d |  | Project Manager |  |  |

Notes:
- 91: lower priority

| ID | WBS | Task | Type | Duration | Start | Finish | Predecessors | Total slack | Free slack | Resources | Work | Cost |
| --- | --- | --- | --- | --- | --- | --- | --- | --- | --- | --- | --- | --- |
| 106 | 2.1.3.2 | **Managing a Stage Boundary (SB)** |  | 4.5d | 2025-06-23 | 2025-06-27 |  | 0.49d | 0d |  | 24h | 2,400 |
| 107 | 2.1.3.2.1 | **Activities** |  | 3d | 2025-06-23 | 2025-06-26 |  | 1.99d | 1.5d |  | 24h | 2,400 |
| 108 | 2.1.3.2.1.1 | Plan the next stage |  | 2d | 2025-06-23 | 2025-06-25 | 83FS-4.5d | 2d | 0d | Project Manager | 16h | 1,600 |
| 109 | 2.1.3.2.1.2 | Update the Project Plan |  | 0.4d | 2025-06-25 | 2025-06-25 | 108 | 2.49d | 0.5d | Project Manager | 3.2h | 320 |
| 110 | 2.1.3.2.1.3 | Update the Business Case |  | 0.4d | 2025-06-25 | 2025-06-26 | 108 | 2.09d | 0.1d | Project Manager | 3.2h | 320 |
| 111 | 2.1.3.2.1.4 | Produce an Exception Plan |  | 0.1d | 2025-06-26 | 2025-06-26 | 108 | 1.99d | 0d | Project Manager | 0.8h | 80 |
| 112 | 2.1.3.2.1.5 | Report stage end |  | 0.1d | 2025-06-26 | 2025-06-26 | 108, 109, 110, 111 | 1.99d |  | Project Manager | 0.8h | 80 |
| 113 | 2.1.3.2.2 | **Management Products** |  | 0d | 2025-06-27 | 2025-06-27 | 107, 92 | 0.49d |  |  |  |  |
| 114 | 2.1.3.2.2.1 | Project Initiation Documentation updated | milestone | 0d | 2025-06-27 | 2025-06-27 |  | 0.49d |  | Project Manager |  |  |
| 115 | 2.1.3.2.2.2 | Configuration Item Records updated | milestone | 0d | 2025-06-27 | 2025-06-27 |  | 0.49d |  | Project Manager |  |  |
| 116 | 2.1.3.2.2.3 | Risk Register updated | milestone | 0d | 2025-06-27 | 2025-06-27 |  | 0.49d |  | Project Manager |  |  |
| 117 | 2.1.3.2.2.4 | Issue Register updated | milestone | 0d | 2025-06-27 | 2025-06-27 |  | 0.49d |  | Project Manager |  |  |
| 118 | 2.1.3.2.2.5 | Quality Register updated | milestone | 0d | 2025-06-27 | 2025-06-27 |  | 0.49d |  | Project Manager |  |  |
| 119 | 2.1.3.2.2.6 | Project Plan updated | milestone | 0d | 2025-06-27 | 2025-06-27 |  | 0.49d |  | Project Manager |  |  |
| 120 | 2.1.3.2.2.7 | Business Case updated | milestone | 0d | 2025-06-27 | 2025-06-27 |  | 0.49d |  | Project Manager |  |  |
| 121 | 2.1.3.2.2.8 | Benefits Review Plan updated | milestone | 0d | 2025-06-27 | 2025-06-27 |  | 0.49d |  | Project Manager |  |  |
| 122 | 2.1.3.2.2.9 | Stage or Exception Plan created | milestone | 0d | 2025-06-27 | 2025-06-27 |  | 0.49d |  | Project Manager |  |  |
| 123 | 2.1.3.2.2.10 | Product Descriptions (next stage) created | milestone | 0d | 2025-06-27 | 2025-06-27 |  | 0.49d |  | Project Manager |  |  |
| 124 | 2.1.3.2.2.11 | End Stage Report created | milestone | 0d | 2025-06-27 | 2025-06-27 |  | 0.49d |  | Project Manager |  |  |
| 125 | 2.1.3.2.2.12 | Lessons Report created | milestone | 0d | 2025-06-27 | 2025-06-27 |  | 0.49d |  | Project Manager |  |  |
| 126 | 2.1.3.3 | Request to approve a Stage (or Exception) Plan |  | 0.01d | 2025-06-27 | 2025-06-30 | 106, 82 | 0.49d | 0d | Project Manager | 0.08h | 8 |
| 127 | 2.1.4 | **Stage 2 (Beta)** |  | 21.5d | 2025-06-30 | 2025-07-30 | 10, 8 | 0.49d |  |  | 160.08h | 16,008 |
| 128 | 2.1.4.1 | **Controlling a Stage (CS)** |  | 21.49d | 2025-06-30 | 2025-07-29 |  | 0.49d | 0d |  | 136h | 13,600 |
| 129 | 2.1.4.1.1 | **Activities** |  | 21.49d | 2025-06-30 | 2025-07-29 |  | 0d |  |  | 136h | 13,600 |
| 130 | 2.1.4.1.1.1 | Authorize a Work package |  | 0.5d | 2025-06-30 | 2025-07-01 |  | 0.49d | 0d | Project Manager | 4h | 400 |
| 131 | 2.1.4.1.1.2 | Capture and examine issues and risks |  | 16d | 2025-07-01 | 2025-07-23 | 130 | 4.99d |  | Project Manager [12.5%] | 20h | 2,000 |
| 132 | 2.1.4.1.1.3 | Escalate issues and risks |  | 16d | 2025-07-01 | 2025-07-23 | 130 | 4.99d |  | Project Manager [5%] | 8h | 800 |
| 133 | 2.1.4.1.1.4 | Take corrective action |  | 16d | 2025-07-01 | 2025-07-23 | 130 | 4.99d |  | Project Manager [12.5%] | 16h | 1,600 |
| 134 | 2.1.4.1.1.5 | Review Work Package status |  | 16d | 2025-07-01 | 2025-07-23 | 130 | 4.99d |  | Project Manager [37.5%] | 40h | 4,000 |
| 135 | 2.1.4.1.1.6 | Review the stage status |  | 16d | 2025-07-01 | 2025-07-23 | 130 | 4.99d |  | Project Manager [25%] | 40h | 4,000 |
| 136 | 2.1.4.1.1.7 | Report Highlights |  | 16d | 2025-07-01 | 2025-07-23 | 130 | 4.99d |  | Project Manager [2.5%] | 4h | 400 |
| 137 | 2.1.4.1.1.8 | Receive completed Work Packages |  | 0.5d | 2025-07-29 | 2025-07-29 | 270 | 0d |  | Project Manager | 4h | 400 |

Notes:
- 137: lower priority

| ID | WBS | Task | Type | Duration | Start | Finish | Predecessors | Total slack | Free slack | Resources | Work | Cost |
| --- | --- | --- | --- | --- | --- | --- | --- | --- | --- | --- | --- | --- |
| 138 | 2.1.4.1.2 | **Management Products** |  | 0d | 2025-07-29 | 2025-07-29 | 129 | 1.49d | 0d |  |  |  |
| 139 | 2.1.4.1.2.1 | Work Packages created | milestone | 0d | 2025-07-29 | 2025-07-29 |  | 1.49d |  | Project Manager |  |  |
| 140 | 2.1.4.1.2.2 | Highlight Report(s) created | milestone | 0d | 2025-07-29 | 2025-07-29 |  | 1.49d |  | Project Manager |  |  |
| 141 | 2.1.4.1.2.3 | Issue Report(s) created | milestone | 0d | 2025-07-29 | 2025-07-29 |  | 1.49d |  | Project Manager |  |  |
| 142 | 2.1.4.1.2.4 | Exception Report(s) created | milestone | 0d | 2025-07-29 | 2025-07-29 |  | 1.49d |  | Project Manager |  |  |
| 143 | 2.1.4.1.2.5 | Stage Plan updated | milestone | 0d | 2025-07-29 | 2025-07-29 |  | 1.49d |  | Project Manager |  |  |
| 144 | 2.1.4.1.2.6 | Configuration Item Records updated | milestone | 0d | 2025-07-29 | 2025-07-29 |  | 1.49d |  | Project Manager |  |  |
| 145 | 2.1.4.1.2.7 | Risk Register updated | milestone | 0d | 2025-07-29 | 2025-07-29 |  | 1.49d |  | Project Manager |  |  |
| 146 | 2.1.4.1.2.8 | Issue Register updated | milestone | 0d | 2025-07-29 | 2025-07-29 |  | 1.49d |  | Project Manager |  |  |
| 147 | 2.1.4.1.2.9 | Quality Register updated | milestone | 0d | 2025-07-29 | 2025-07-29 |  | 1.49d |  | Project Manager |  |  |
| 148 | 2.1.4.1.2.10 | Work Package(s) updated | milestone | 0d | 2025-07-29 | 2025-07-29 |  | 1.49d |  | Project Manager |  |  |
| 149 | 2.1.4.1.2.11 | Lessons log updated | milestone | 0d | 2025-07-29 | 2025-07-29 |  | 1.49d |  | Project Manager |  |  |
| 150 | 2.1.4.1.2.12 | Issue Report updated | milestone | 0d | 2025-07-29 | 2025-07-29 |  | 1.49d |  | Project Manager |  |  |
| 151 | 2.1.4.1.2.13 | Daily Log updated | milestone | 0d | 2025-07-29 | 2025-07-29 |  | 1.49d |  | Project Manager |  |  |
| 152 | 2.1.4.2 | **Managing a Stage Boundary (SB)** |  | 4d | 2025-07-23 | 2025-07-29 |  | 0d |  |  | 24h | 2,400 |
| 153 | 2.1.4.2.1 | **Activities** |  | 3d | 2025-07-23 | 2025-07-28 |  | 0d |  |  | 24h | 2,400 |
| 155 | 2.1.4.2.1.1 | Update the Project Plan |  | 0.4d | 2025-07-25 | 2025-07-28 |  | 2.99d | 0.5d | Project Manager | 3.2h | 320 |
| 156 | 2.1.4.2.1.2 | Update the Business Case |  | 0.4d | 2025-07-28 | 2025-07-28 |  | 2.59d | 0.1d | Project Manager | 3.2h | 320 |
| 157 | 2.1.4.2.1.3 | Produce an Exception Plan |  | 0.1d | 2025-07-28 | 2025-07-28 |  | 2.49d | 0d | Project Manager | 0.8h | 80 |
| 158 | 2.1.4.2.1.4 | Report stage end |  | 0.1d | 2025-07-28 | 2025-07-28 | 155, 156, 157 | 2.49d |  | Project Manager | 0.8h | 80 |
| 159 | 2.1.4.2.2 | **Management Products** |  | 0d | 2025-07-29 | 2025-07-29 | 138, 153 | 1.49d |  |  |  |  |
| 160 | 2.1.4.2.2.1 | Project Initiation Documentation updated | milestone | 0d | 2025-07-29 | 2025-07-29 |  | 1.49d |  | Project Manager |  |  |
| 161 | 2.1.4.2.2.2 | Configuration Item Records updated | milestone | 0d | 2025-07-29 | 2025-07-29 |  | 1.49d |  | Project Manager |  |  |
| 162 | 2.1.4.2.2.3 | Risk Register updated | milestone | 0d | 2025-07-29 | 2025-07-29 |  | 1.49d |  | Project Manager |  |  |
| 163 | 2.1.4.2.2.4 | Issue Register updated | milestone | 0d | 2025-07-29 | 2025-07-29 |  | 1.49d |  | Project Manager |  |  |
| 164 | 2.1.4.2.2.5 | Quality Register updated | milestone | 0d | 2025-07-29 | 2025-07-29 |  | 1.49d |  | Project Manager |  |  |
| 165 | 2.1.4.2.2.6 | Project Plan updated | milestone | 0d | 2025-07-29 | 2025-07-29 |  | 1.49d |  | Project Manager |  |  |
| 166 | 2.1.4.2.2.7 | Business Case updated | milestone | 0d | 2025-07-29 | 2025-07-29 |  | 1.49d |  | Project Manager |  |  |
| 167 | 2.1.4.2.2.8 | Benefits Review Plan updated | milestone | 0d | 2025-07-29 | 2025-07-29 |  | 1.49d |  | Project Manager |  |  |
| 168 | 2.1.4.2.2.9 | Stage or Exception Plan created | milestone | 0d | 2025-07-29 | 2025-07-29 |  | 1.49d |  | Project Manager |  |  |
| 169 | 2.1.4.2.2.10 | Product Descriptions (next stage) created | milestone | 0d | 2025-07-29 | 2025-07-29 |  | 1.49d |  | Project Manager |  |  |
| 170 | 2.1.4.2.2.11 | End Stage Report created | milestone | 0d | 2025-07-29 | 2025-07-29 |  | 1.49d |  | Project Manager |  |  |
| 171 | 2.1.4.2.2.12 | Lessons Report created | milestone | 0d | 2025-07-29 | 2025-07-29 |  | 1.49d |  | Project Manager |  |  |
| 172 | 2.1.4.3 | Request to approve a Stage (or Exception) Plan |  | 0.01d | 2025-07-29 | 2025-07-30 | 128, 152 | 1.49d | 0d | Project Manager | 0.08h | 8 |

| ID | WBS | Task | Type | Duration | Start | Finish | Predecessors | Total slack | Free slack | Resources | Work | Cost |
| --- | --- | --- | --- | --- | --- | --- | --- | --- | --- | --- | --- | --- |
| 173 | 2.1.5 | **Final Stage (GA)** |  | 22.5d | 2025-07-30 | 2025-09-01 | 12 | 0d |  |  | 160.08h | 16,008 |
| 174 | 2.1.5.1 | **Controlling a Stage (CS)** |  | 22.49d | 2025-07-30 | 2025-08-29 |  | 0d |  |  | 136h | 13,600 |
| 175 | 2.1.5.1.1 | **Activities** |  | 22.49d | 2025-07-30 | 2025-08-29 |  | 0d |  |  | 136h | 13,600 |
| 176 | 2.1.5.1.1.1 | Authorize a Work package |  | 0.5d | 2025-07-30 | 2025-07-31 |  | 1.49d | 0d | Project Manager | 4h | 400 |
| 177 | 2.1.5.1.1.2 | Capture and examine issues and risks |  | 16d | 2025-07-31 | 2025-08-22 | 176 | 5.99d |  | Project Manager [15.6%] | 20h | 2,000 |
| 178 | 2.1.5.1.1.3 | Escalate issues and risks |  | 16d | 2025-07-31 | 2025-08-22 | 176 | 5.99d |  | Project Manager [6.2%] | 8h | 800 |
| 179 | 2.1.5.1.1.4 | Take corrective action |  | 16d | 2025-07-31 | 2025-08-22 | 176 | 5.99d |  | Project Manager [12.5%] | 16h | 1,600 |
| 181 | 2.1.5.1.1.5 | Review the stage status |  | 16d | 2025-07-31 | 2025-08-22 | 176 | 5.99d |  | Project Manager [31.2%] | 40h | 4,000 |
| 182 | 2.1.5.1.1.6 | Report Highlights |  | 16d | 2025-07-31 | 2025-08-22 | 176 | 5.99d |  | Project Manager [3.1%] | 4h | 400 |
| 183 | 2.1.5.1.1.7 | Receive completed Work Packages |  | 0.5d | 2025-08-29 | 2025-08-29 | 287 | 0d |  | Project Manager | 4h | 400 |
| 184 | 2.1.5.1.2 | **Management Products** |  | 0d | 2025-08-29 | 2025-08-29 | 175 | 0d |  |  |  |  |
| 185 | 2.1.5.1.2.1 | Work Packages created | milestone | 0d | 2025-08-29 | 2025-08-29 |  | 0d |  | Project Manager |  |  |
| 186 | 2.1.5.1.2.2 | Highlight Report(s) created | milestone | 0d | 2025-08-29 | 2025-08-29 |  | 0d |  | Project Manager |  |  |
| 187 | 2.1.5.1.2.3 | Issue Report(s) created | milestone | 0d | 2025-08-29 | 2025-08-29 |  | 0d |  | Project Manager |  |  |
| 188 | 2.1.5.1.2.4 | Exception Report(s) created | milestone | 0d | 2025-08-29 | 2025-08-29 |  | 0d |  | Project Manager |  |  |
| 189 | 2.1.5.1.2.5 | Stage Plan updated | milestone | 0d | 2025-08-29 | 2025-08-29 |  | 0d |  | Project Manager |  |  |
| 190 | 2.1.5.1.2.6 | Configuration Item Records updated | milestone | 0d | 2025-08-29 | 2025-08-29 |  | 0d |  | Project Manager |  |  |
| 191 | 2.1.5.1.2.7 | Risk Register updated | milestone | 0d | 2025-08-29 | 2025-08-29 |  | 0d |  | Project Manager |  |  |
| 192 | 2.1.5.1.2.8 | Issue Register updated | milestone | 0d | 2025-08-29 | 2025-08-29 |  | 0d |  | Project Manager |  |  |
| 193 | 2.1.5.1.2.9 | Quality Register updated | milestone | 0d | 2025-08-29 | 2025-08-29 |  | 0d |  | Project Manager |  |  |
| 194 | 2.1.5.1.2.10 | Work Package(s) updated | milestone | 0d | 2025-08-29 | 2025-08-29 |  | 0d |  | Project Manager |  |  |
| 195 | 2.1.5.1.2.11 | Lessons log updated | milestone | 0d | 2025-08-29 | 2025-08-29 |  | 0d |  | Project Manager |  |  |
| 196 | 2.1.5.1.2.12 | Issue Report updated | milestone | 0d | 2025-08-29 | 2025-08-29 |  | 0d |  | Project Manager |  |  |
| 197 | 2.1.5.1.2.13 | Daily Log updated | milestone | 0d | 2025-08-29 | 2025-08-29 |  | 0d |  | Project Manager |  |  |

Notes:
- 183: priority low

| ID | WBS | Task | Type | Duration | Start | Finish | Predecessors | Total slack | Free slack | Resources | Work | Cost |
| --- | --- | --- | --- | --- | --- | --- | --- | --- | --- | --- | --- | --- |
| 198 | 2.1.5.2 | **Closing a Project (CP)** |  | 4d | 2025-08-25 | 2025-08-29 |  | 0d |  |  | 24h | 2,400 |
| 199 | 2.1.5.2.1 | **Activities** |  | 3d | 2025-08-25 | 2025-08-28 |  | 1d |  |  | 24h | 2,400 |
| 200 | 2.1.5.2.1.1 | Prepare planned (or premature) closure |  | 1d | 2025-08-25 | 2025-08-26 | 175FS-4d | 1d | 0d | Project Manager | 8h | 800 |
| 201 | 2.1.5.2.1.2 | Evaluate the project |  | 1.5d | 2025-08-26 | 2025-08-28 | 200 | 1d | 0d | Project Manager | 12h | 1,200 |
| 202 | 2.1.5.2.1.3 | Hand over products |  | 0.4d | 2025-08-28 | 2025-08-28 | 201 | 1d | 0d | Project Manager | 3.2h | 320 |
| 203 | 2.1.5.2.1.4 | Recommend project closure |  | 0.1d | 2025-08-28 | 2025-08-28 | 202 | 1d |  | Project Manager | 0.8h | 80 |
| 204 | 2.1.5.2.2 | **Management Products** |  | 0d | 2025-08-29 | 2025-08-29 | 184 | 0d |  |  |  |  |
| 205 | 2.1.5.2.2.1 | Follow-on action recommendations created | milestone | 0d | 2025-08-29 | 2025-08-29 |  | 0d |  | Project Manager |  |  |
| 206 | 2.1.5.2.2.2 | Lessons Report created | milestone | 0d | 2025-08-29 | 2025-08-29 |  | 0d |  | Project Manager |  |  |
| 207 | 2.1.5.2.2.3 | Project Initiation Documentation updated | milestone | 0d | 2025-08-29 | 2025-08-29 |  | 0d |  | Project Manager |  |  |
| 208 | 2.1.5.2.2.4 | Project Plan updated | milestone | 0d | 2025-08-29 | 2025-08-29 |  | 0d |  | Project Manager |  |  |
| 209 | 2.1.5.2.2.5 | Issue Register updated | milestone | 0d | 2025-08-29 | 2025-08-29 |  | 0d |  | Project Manager |  |  |
| 210 | 2.1.5.2.2.6 | Configuration Item Records updated | milestone | 0d | 2025-08-29 | 2025-08-29 |  | 0d |  | Project Manager |  |  |
| 211 | 2.1.5.2.2.7 | Benefits Review Plan updated | milestone | 0d | 2025-08-29 | 2025-08-29 |  | 0d |  | Project Manager |  |  |
| 212 | 2.1.5.2.2.8 | Risk Register closed | milestone | 0d | 2025-08-29 | 2025-08-29 |  | 0d |  | Project Manager |  |  |
| 213 | 2.1.5.2.2.9 | Issue Register closed | milestone | 0d | 2025-08-29 | 2025-08-29 |  | 0d |  | Project Manager |  |  |
| 214 | 2.1.5.2.2.10 | Quality Register closed | milestone | 0d | 2025-08-29 | 2025-08-29 |  | 0d |  | Project Manager |  |  |
| 215 | 2.1.5.2.2.11 | Daily Log closed | milestone | 0d | 2025-08-29 | 2025-08-29 |  | 0d |  | Project Manager |  |  |
| 216 | 2.1.5.2.2.12 | Lessons Log closed | milestone | 0d | 2025-08-29 | 2025-08-29 |  | 0d |  | Project Manager |  |  |
| 217 | 2.1.5.3 | Closure recommendation |  | 0.01d | 2025-08-29 | 2025-09-01 | 198, 174 | 0d |  | Project Manager | 0.08h | 8 |
| 218 | 3 | **Delivery Level:** |  | 129.75d | 2025-02-28 | 2025-08-29 |  | 0d |  |  | 7824h | 480,000 |
| 219 | 3.1 | **Managing Product Delivery (MP)** |  | 129.75d | 2025-02-28 | 2025-08-29 |  | 0d |  |  | 7824h | 480,000 |
| 220 | 3.1.1 | **Stage 1 (Alpha)** |  | 84.75d | 2025-02-28 | 2025-06-27 |  | 0d |  |  | 5248h | 320,000 |
| 221 | 3.1.1.1 | **Management Products** |  | 0d | 2025-06-27 | 2025-06-27 | 226 | 0d |  |  |  |  |
| 222 | 3.1.1.1.1 | Quality Register updated | milestone | 0d | 2025-06-27 | 2025-06-27 |  | 0d |  |  |  |  |
| 223 | 3.1.1.1.2 | Configuration Item Records updated | milestone | 0d | 2025-06-27 | 2025-06-27 |  | 0d |  |  |  |  |
| 224 | 3.1.1.1.3 | Team Plan created | milestone | 0d | 2025-06-27 | 2025-06-27 |  | 0d |  |  |  |  |
| 225 | 3.1.1.1.4 | Checkpoint Reports created | milestone | 0d | 2025-06-27 | 2025-06-27 |  | 0d |  |  |  |  |

| ID | WBS | Task | Type | Duration | Start | Finish | Predecessors | Total slack | Resources | Work | Cost |
| --- | --- | --- | --- | --- | --- | --- | --- | --- | --- | --- | --- |
| 226 | 3.1.1.2 | **Activities** |  | 84.75d | 2025-02-28 | 2025-06-27 |  | 0d |  | 5248h | 320,000 |
| 227 | 3.1.1.2.1 | Accept a Work Package | milestone | 0d | 2025-02-28 | 2025-02-28 | 84, 130 | 0d |  |  |  |
| 228 | 3.1.1.2.2 | **Execute a Work Package** |  | 84.75d | 2025-02-28 | 2025-06-27 | 227 | 0d |  | 5248h | 320,000 |
| 229 | 3.1.1.2.2.1 | **Sprint 1** |  | 20d | 2025-02-28 | 2025-03-28 |  | 0d |  | 1280h | 80,000 |
| 230 | 3.1.1.2.2.1.1 | Sprint Planning |  | 1d | 2025-02-28 | 2025-03-03 |  | 0d | Backend Team Dev 1 [800%]; Backend Team Dev 2 [800%]; Backend Team Senior 1 [800%]; Backend Team Senior 2 [800%]; Web Team Dev 1 [800%]; Web Team Dev 2 [800%]; Web Team Senior 1 [800%]; Web Team Senior 2 [800%] | 64h | 4,000 |
| 231 | 3.1.1.2.2.1.2 | Execute Sprint |  | 18d | 2025-03-03 | 2025-03-27 | 230 | 0d | Backend Team Dev 1; Backend Team Dev 2; Backend Team Senior 1; Backend Team Senior 2; Web Team Dev 1; Web Team Dev 2; Web Team Senior 1; Web Team Senior 2 | 1152h | 72,000 |
| 232 | 3.1.1.2.2.1.3 | Sprint Review |  | 0.5d | 2025-03-27 | 2025-03-28 | 231 | 0d | Backend Team Dev 1 [800%]; Backend Team Dev 2 [800%]; Backend Team Senior 1 [800%]; Backend Team Senior 2 [800%]; Web Team Dev 1 [800%]; Web Team Dev 2 [800%]; Web Team Senior 1 [800%]; Web Team Senior 2 [800%] | 32h | 2,000 |
| 233 | 3.1.1.2.2.1.4 | Sprint Retrospective |  | 0.5d | 2025-03-28 | 2025-03-28 | 232 | 0d | Backend Team Dev 1; Backend Team Dev 2; Backend Team Senior 1; Backend Team Senior 2; Web Team Dev 1; Web Team Dev 2; Web Team Senior 1; Web Team Senior 2 | 32h | 2,000 |
| 234 | 3.1.1.2.2.2 | Buffer |  | 1d | 2025-03-28 | 2025-03-31 | 229 | 0d |  |  |  |
| 235 | 3.1.1.2.4 | **Sprint 2** |  | 20d | 2025-03-31 | 2025-04-28 | 234 | 0d |  | 1280h | 80,000 |
| 236 | 3.1.1.2.2.3.1 | Sprint Planning |  | 1d | 2025-03-31 | 2025-04-01 |  | 0d | Backend Team Dev 1 [800%]; Backend Team Dev 2 [800%]; Backend Team Senior 1 [800%]; Backend Team Senior 2 [800%]; Web Team Dev 1 [800%]; Web Team Dev 2 [800%]; Web Team Senior 1 [800%]; Web Team Senior 2 [800%] | 64h | 4,000 |
| 237 | 3.1.1.2.2.3.2 | Execute Sprint |  | 18d | 2025-04-01 | 2025-04-25 | 236 | 0d | Backend Team Dev 1; Backend Team Dev 2; Backend Team Senior 1; Backend Team Senior 2; Web Team Dev 1; Web Team Dev 2; Web Team Senior 1; Web Team Senior 2 | 1152h | 72,000 |
| 238 | 3.1.1.2.2.3.3 | Sprint Review |  | 0.5d | 2025-04-25 | 2025-04-28 | 237 | 0d | Backend Team Dev 1; Backend Team Dev 2; Backend Team Senior 1; Backend Team Senior 2; Web Team Dev 1; Web Team Dev 2; Web Team Senior 1; Web Team Senior 2 | 32h | 2,000 |
| 239 | 3.1.1.2.2.3.4 | Sprint Retrospective |  | 0.5d | 2025-04-28 | 2025-04-28 | 238 | 0d | Backend Team Dev 1; Backend Team Dev 2; Backend Team Senior 1; Backend Team Senior 2; Web Team Dev 1; Web Team Dev 2; Web Team Senior 1; Web Team Senior 2 | 32h | 2,000 |
| 240 | 3.1.1.2.2.4 | Buffer |  | 2d | 2025-04-28 | 2025-04-30 | 235 | 0d |  | 128h |  |
| 241 | 3.1.1.2.2.5 | **Sprint 3** |  | 20d | 2025-04-30 | 2025-05-28 | 240 | 0d |  | 1280h | 80,000 |
| 242 | 3.1.1.2.2.5.1 | Sprint Planning |  | 1d | 2025-04-30 | 2025-05-01 |  | 0d | Backend Team Dev 1 [800%]; Backend Team Dev 2 [800%]; Backend Team Senior 1 [800%]; Backend Team Senior 2 [800%]; Web Team Dev 1 [800%]; Web Team Dev 2 [800%]; Web Team Senior 1 [800%]; Web Team Senior 2 [800%] | 64h | 4,000 |
| 243 | 3.1.1.2.2.5.2 | Execute Sprint |  | 18d | 2025-05-01 | 2025-05-27 | 242 | 0d | Backend Team Dev 1; Backend Team Dev 2; Backend Team Senior 1; Backend Team Senior 2; Web Team Dev 1; Web Team Dev 2; Web Team Senior 1; Web Team Senior 2 | 1152h | 72,000 |
| 244 | 3.1.1.2.2.5.3 | Sprint Review |  | 0.5d | 2025-05-27 | 2025-05-28 | 243 | 0d | Backend Team Dev 1; Backend Team Dev 2; Backend Team Senior 1; Backend Team Senior 2; Web Team Dev 1; Web Team Dev 2; Web Team Senior 1; Web Team Senior 2 | 32h | 2,000 |
| 245 | 3.1.1.2.2.5.4 | Sprint Retrospective |  | 0.5d | 2025-05-28 | 2025-05-28 | 244 | 0d | Backend Team Dev 1; Backend Team Dev 2; Backend Team Senior 1; Backend Team Senior 2; Web Team Dev 1; Web Team Dev 2; Web Team Senior 1; Web Team Senior 2 | 32h | 2,000 |
| 246 | 3.1.1.2.2.6 | Buffer |  | 1.75d | 2025-05-28 | 2025-05-30 | 241 | 0d |  |  |  |
| 247 | 3.1.1.2.2.7 | **Sprint 4** |  | 20d | 2025-05-30 | 2025-06-27 | 246 | 0d |  | 1280h | 80,000 |
| 248 | 3.1.1.2.2.7.1 | Sprint Planning |  | 1d | 2025-05-30 | 2025-06-02 |  | 0d | Backend Team Dev 1 [800%]; Backend Team Dev 2 [800%]; Backend Team Senior 1 [800%]; Backend Team Senior 2 [800%]; Web Team Dev 1 [800%]; Web Team Dev 2 [800%]; Web Team Senior 1 [800%]; Web Team Senior 2 [800%] | 64h | 4,000 |
| 249 | 3.1.1.2.2.7.2 | Execute Sprint |  | 18d | 2025-06-02 | 2025-06-26 | 248 | 0d | Backend Team Dev 1; Backend Team Dev 2; Backend Team Senior 1; Backend Team Senior 2; Web Team Dev 1; Web Team Dev 2; Web Team Senior 1; Web Team Senior 2 | 1152h | 72,000 |
| 250 | 3.1.1.2.2.7.3 | Sprint Review |  | 0.5d | 2025-06-26 | 2025-06-26 | 249 | 0d | Backend Team Dev 1; Backend Team Dev 2; Backend Team Senior 1; Backend Team Senior 2; Web Team Dev 1; Web Team Dev 2; Web Team Senior 1; Web Team Senior 2 | 32h | 2,000 |
| 251 | 3.1.1.2.2.7.4 | Sprint Retrospective |  | 0.5d | 2025-06-26 | 2025-06-27 | 250 | 0d | Backend Team Dev 1; Backend Team Dev 2; Backend Team Senior 1; Backend Team Senior 2; Web Team Dev 1; Web Team Dev 2; Web Team Senior 1; Web Team Senior 2 | 32h | 2,000 |

| ID | WBS | Task | Type | Duration | Start | Finish | Predecessors | Total slack | Resources | Work | Cost |
| --- | --- | --- | --- | --- | --- | --- | --- | --- | --- | --- | --- |
| 252 | 3.1.1.2.3 | **Deliver a Work Package** |  | 0d | 2025-06-27 | 2025-06-27 | 228 | 0d |  |  |  |
| 253 | 3.1.1.2.3.1 | Alpha Release | milestone | 0d | 2025-06-27 | 2025-06-27 |  | 0d |  |  |  |
| 254 | 3.1.2 | Buffer |  | 2d | 2025-06-27 | 2025-07-01 | 220 | 0d |  |  |  |
| 255 | 3.1.3 | **Stage 2 (Beta)** |  | 20d | 2025-07-01 | 2025-07-29 | 254 | 0d |  | 1280h | 80,000 |
| 256 | 3.1.3.1 | **Management Products** |  | 0d | 2025-07-29 | 2025-07-29 | 261 | 0d |  |  |  |
| 257 | 3.1.3.1.1 | Quality Register updated | milestone | 0d | 2025-07-29 | 2025-07-29 |  | 0d |  |  |  |
| 258 | 3.1.3.1.2 | Configuration Item Records updated | milestone | 0d | 2025-07-29 | 2025-07-29 |  | 0d |  |  |  |
| 259 | 3.1.3.1.3 | Team Plan created | milestone | 0d | 2025-07-29 | 2025-07-29 |  | 0d |  |  |  |
| 260 | 3.1.3.1.4 | Checkpoint Reports created | milestone | 0d | 2025-07-29 | 2025-07-29 |  | 0d |  |  |  |
| 261 | 3.1.3.2 | **Activities** |  | 20d | 2025-07-01 | 2025-07-29 |  | 0d |  | 1280h | 80,000 |
| 262 | 3.1.3.2.1 | Accept a Work Package | milestone | 0d | 2025-07-01 | 2025-07-01 | 130 | 0d |  |  |  |
| 263 | 3.1.3.2.2 | **Execute a Work Package** |  | 20d | 2025-07-01 | 2025-07-29 | 262 | 0d |  | 1280h | 80,000 |
| 264 | 3.1.3.2.2.1 | **Sprint 5** |  | 20d | 2025-07-01 | 2025-07-29 | 254 | 0d |  | 1280h | 80,000 |
| 265 | 3.1.3.2.2.1.1 | Sprint Planning |  | 1d | 2025-07-01 | 2025-07-02 |  | 0d | Backend Team Dev 1 [800%]; Backend Team Dev 2 [800%]; Backend Team Senior 1 [800%]; Backend Team Senior 2 [800%]; Web Team Dev 1 [800%]; Web Team Dev 2 [800%]; Web Team Senior 1 [800%]; Web Team Senior 2 [800%] | 64h | 4,000 |
| 266 | 3.1.3.2.2.1.2 | Execute Sprint |  | 18d | 2025-07-02 | 2025-07-28 | 265 | 0d | Backend Team Dev 1; Backend Team Dev 2; Backend Team Senior 1; Backend Team Senior 2; Web Team Dev 1; Web Team Dev 2; Web Team Senior 1; Web Team Senior 2 | 1152h | 72,000 |
| 267 | 3.1.3.2.2.1.3 | Sprint Review |  | 0.5d | 2025-07-28 | 2025-07-28 | 266 | 0d | Backend Team Dev 1; Backend Team Dev 2; Backend Team Senior 1; Backend Team Senior 2; Web Team Dev 1; Web Team Dev 2; Web Team Senior 1; Web Team Senior 2 | 32h | 2,000 |
| 268 | 3.1.3.2.2.1.4 | Sprint Retrospective |  | 0.5d | 2025-07-28 | 2025-07-29 | 267 | 0d | Backend Team Dev 1; Backend Team Dev 2; Backend Team Senior 1; Backend Team Senior 2; Web Team Dev 1; Web Team Dev 2; Web Team Senior 1; Web Team Senior 2 | 32h | 2,000 |
| 269 | 3.1.3.2.3 | **Deliver a Work Package** |  | 0d | 2025-07-29 | 2025-07-29 | 263 | 0d |  |  |  |
| 270 | 3.1.3.2.3.1 | Beta Release | milestone | 0d | 2025-07-29 | 2025-07-29 |  | 0d |  |  |  |
| 271 | 3.1.4 | Buffer |  | 3d | 2025-07-29 | 2025-08-01 | 255 | 0d |  | 16h |  |
| 272 | 3.1.5 | **Final Stage (GA)** |  | 20d | 2025-08-01 | 2025-08-29 | 271 | 0d |  | 1280h | 80,000 |
| 273 | 3.1.5.1 | **Management Products** |  | 0d | 2025-08-29 | 2025-08-29 | 278 | 1.01d |  |  |  |
| 274 | 3.1.5.1.1 | Quality Register updated | milestone | 0d | 2025-08-29 | 2025-08-29 |  | 1.01d |  |  |  |
| 275 | 3.1.5.1.2 | Configuration Item Records updated | milestone | 0d | 2025-08-29 | 2025-08-29 |  | 1.01d |  |  |  |
| 276 | 3.1.5.1.3 | Team Plan created | milestone | 0d | 2025-08-29 | 2025-08-29 |  | 1.01d |  |  |  |
| 277 | 3.1.5.1.4 | Checkpoint Reports created | milestone | 0d | 2025-08-29 | 2025-08-29 |  | 1.01d |  |  |  |

| ID | WBS | Task | Type | Duration | Start | Finish | Predecessors | Total slack | Resources | Work | Cost |
| --- | --- | --- | --- | --- | --- | --- | --- | --- | --- | --- | --- |
| 278 | 3.1.5.2 | **Activities** |  | 20d | 2025-08-01 | 2025-08-29 |  | 0d |  | 1280h | 80,000 |
| 279 | 3.1.5.2.1 | Accept a Work Package | milestone | 0d | 2025-08-01 | 2025-08-01 | 176 | 0d |  |  |  |
| 280 | 3.1.5.2.2 | **Execute a Work Package** |  | 20d | 2025-08-01 | 2025-08-29 | 279 | 0d |  | 1280h | 80,000 |
| 281 | 3.1.5.2.2.1 | **Sprint 6** |  | 20d | 2025-08-01 | 2025-08-29 | 271 | 0d |  | 1280h | 80,000 |
| 282 | 3.1.5.2.2.1.1 | Sprint Planning |  | 1d | 2025-08-01 | 2025-08-04 |  | 0d | Backend Team Dev 1 [800%]; Backend Team Dev 2 [800%]; Backend Team Senior 1 [800%]; Backend Team Senior 2 [800%]; Web Team Dev 1 [800%]; Web Team Dev 2 [800%]; Web Team Senior 1 [800%]; Web Team Senior 2 [800%] | 64h | 4,000 |
| 283 | 3.1.5.2.2.1.2 | Execute Sprint |  | 18d | 2025-08-04 | 2025-08-28 | 282 | 0d | Backend Team Dev 1 [800%]; Backend Team Dev 2 [800%]; Backend Team Senior 1 [800%]; Backend Team Senior 2 [800%]; Web Team Dev 1 [800%]; Web Team Dev 2 [800%]; Web Team Senior 1 [800%]; Web Team Senior 2 [800%] | 1152h | 72,000 |
| 284 | 3.1.5.2.2.1.3 | Sprint Review |  | 0.5d | 2025-08-28 | 2025-08-28 | 283 | 0d | Backend Team Dev 1 [800%]; Backend Team Dev 2 [800%]; Backend Team Senior 1 [800%]; Backend Team Senior 2 [800%]; Web Team Dev 1 [800%]; Web Team Dev 2 [800%]; Web Team Senior 1 [800%]; Web Team Senior 2 [800%] | 32h | 2,000 |
| 285 | 3.1.5.2.2.1.4 | Sprint Retrospective |  | 0.5d | 2025-08-28 | 2025-08-29 | 284 | 0d | Backend Team Dev 1 [800%]; Backend Team Dev 2 [800%]; Backend Team Senior 1 [800%]; Backend Team Senior 2 [800%]; Web Team Dev 1 [800%]; Web Team Dev 2 [800%]; Web Team Senior 1 [800%]; Web Team Senior 2 [800%] | 32h | 2,000 |
| 286 | 3.1.5.2.3 | **Deliver a Work Package** |  | 0d | 2025-08-29 | 2025-08-29 | 280 | 0d |  |  |  |
| 287 | 3.1.5.2.3.1 | GA Release | milestone | 0d | 2025-08-29 | 2025-08-29 |  | 0d |  |  |  |
